# Deployment Checklist

Schedule from MS Project, 2003-02-03 to 2003-03-21.
Alberta Energy Company Ltd.

## Calendars

- Standard: Mon-Fri 08:00-12:00, 13:00-17:00; Sat-Sun off. Exceptions (off unless hours are given): 2003-02-17.

## Resources

| Resource |
| --- |
| Implementation Lead |
| Team |
| Communications Lead |
| Business Sponsor |
| Expert User |
| CR Lead |
| Technical Lead |
| Other clients |
| Technical Analyst |
| System Admin |
| Other Platform Services resources |
| Testing Lead |
| Tester |
| Training Lead |
| Trainer |
| KM Support Lead |
| Action Centre rep |
| Feedback Administrator |
| System Administrator |
| CR Lead on request |
| CR Lead(on request) |
| Support Lead |
| SupportLead |
| Communications Specialist |
| Communications/Training Lead |
| Business Contact |
| Support |
| PM/BA |
| Change Readiness Leadt |

## Schedule

| ID | WBS | Task | Duration | Start | Finish | Predecessors | Total slack | Free slack | Resources | Work |
| --- | --- | --- | --- | --- | --- | --- | --- | --- | --- | --- |
| 1 | 1 | **KNOWLEDGE MANAGEMENT PROJECT: LIVELINK DEPLOYMENT CHECKLIST** | 33.11d? | 2003-02-03 | 2003-03-21 |  | 0d |  |  | 2308.94h |
| 2 | 1.1 | **1.0 Project start-up** | 16d? | 2003-02-03 | 2003-02-25 |  | 17.11d |  | PM/BA; Communications Lead; CR Lead | 935.09h |
| 3 | 1.1.1 | - Assess business problem/expectations | 1d | 2003-02-03 | 2003-02-03 |  | 42.45d |  | PM/BA | 8h |
| 4 | 1.1.2 | - Create project workspace | 1d? | 2003-02-03 | 2003-02-03 |  | 42.45d |  | PM/BA [12.5%] | 1h |
| 5 | 1.1.3 | - Schedule and hold project kick-off session (communications) | 1.6d? | 2003-02-03 | 2003-02-04 |  | 41.85d |  | PM/BA [40%]; Communications Lead [40%]; CR Lead [10%]; Business Sponsor [10%] | 8h |
| 6 | 1.1.4 | - Obtain/ confirm project resources | 2d | 2003-02-03 | 2003-02-04 |  | 41.45d |  | PM/BA | 16h |
| 7 | 1.1.5 | - Send project kick-off email | 1d? | 2003-02-03 | 2003-02-03 |  | 42.45d |  | PM/BA | 8h |
| 8 | 1.1.6 | **1.2 Create Project Charter** | 1d? | 2003-02-03 | 2003-02-03 |  | 32.11d | 0d | PM/BA | 40h |
| 9 | 1.1.6.1 | - Clarify expectations with sponsor and business contacts re: roles and time commitment | 0.5d? | 2003-02-03 | 2003-02-03 |  | 42.95d |  | PM/BA; CR Lead on request | 8h |
| 10 | 1.1.6.2 | - Change Readiness Lead reviews & signs off on Project Charter before business sponsors | 1d? | 2003-02-03 | 2003-02-03 |  | 42.45d |  | PM/BA; CR Lead | 16h |
| 11 | 1.1.6.3 | - Obtain Business Sponsor sign-off | 1d? | 2003-02-03 | 2003-02-03 |  | 42.45d |  | PM/BA | 8h |
| 12 | 1.1.7 | 1.3 Prepare Work Breakdown Structure &/or Cost Benefit Assessment (if required) | 3d | 2003-02-03 | 2003-02-05 |  | 40.45d |  | PM/BA | 24h |
| 13 | 1.1.8 | 1.4 Create Project Plan | 1d | 2003-02-03 | 2003-02-03 | 8FF | 42.45d |  | PM/BA | 8h |
| 14 | 1.1.9 | 1.5 Create AFE & obtain approval (if required) | 1d | 2003-02-03 | 2003-02-03 |  | 42.45d |  | PM/BA | 8h |
| 15 | 1.3.3 | **1.6 Change Readiness Planning** | 3.75d? | 2003-02-03 | 2003-02-06 |  | 29.36d |  | CR Lead | 46h |
| 16 | 1.1.10.1 | - Change Readiness Assessment | 2.08d? | 2003-02-03 | 2003-02-06 |  | 39.7d |  | PM/BA [20%]; CR Lead [50%]; Business Contact [20%]; Communications Lead [10%] | 10h |
| 17 | 1.1.10.2 | - Review Change Readiness Checklist | 0.75d? | 2003-02-03 | 2003-02-03 |  | 42.7d |  | PM/BA [25%]; CR Lead [50%]; Business Contact [25%] | 6h |
| 18 | 1.1.11 | **1.7 Create Communications Plan** | 1d? | 2003-02-03 | 2003-02-03 |  | 32.11d |  | PM/BA [40%]; CR Lead [10%]; Communications Lead [80%] | 42.4h |
| 19 | 1.1.11.1 | - determine stakeholders & establish communications requirements | 0.5d? | 2003-02-03 | 2003-02-03 |  | 42.95d |  | Communications Lead; PM/BA | 8h |
| 20 | 1.1.11.2 | - conduct Town Hall meeting with group (if required) | 1d? | 2003-02-03 | 2003-02-03 |  | 42.45d |  | PM/BA; Communications Lead | 16h |
| 21 | 1.1.11.3 | - align communications deliverables with change readiness assessment | 1d? | 2003-02-03 | 2003-02-03 |  | 42.45d |  | Communications Lead | 8h |
| 22 | 1.1.12 | **1.8 Project Tracking** | 16d | 2003-02-03 | 2003-02-25 |  | 17.11d |  | PM/BA | 341.69h |
| 23 | 1.1.12.1 | - schedule and hold regular status meetings | 10d | 2003-02-03 | 2003-02-14 | 8SS | 33.45d |  | PM/BA [50%]; Team [50%] | 40h |
| 24 | 1.1.12.2 | - status report (and continue issuing throughout project) | 1d | 2003-02-03 | 2003-02-03 | 8SS | 42.45d |  | PM/BA [300%] | 24h |
| 25 | 1.1.12.3 | - communicate issue management processes | 10d | 2003-02-03 | 2003-02-25 | 8SS | 27.45d |  | PM/BA [80%]; CR Lead [25%]; Communications Lead [25%] | 80h |
| 26 | 1.1.12.4 | - issue management | 5d | 2003-02-03 | 2003-02-07 |  | 38.45d |  | PM/BA | 40h |
| 27 | 1.1.12.5 | - track to project plan | 10.03d | 2003-02-03 | 2003-02-18 | 8SS | 33.42d |  | PM/BA [37%] | 29.69h |

Notes:
- 2: Project Start-up Checklist template - / http://cgyap025/livelink/livelink.exe/livelink/livelink.exe?func=doc.Fetch&nodeid=1135464
- 3: Opportunity Assessment template: http://cgyap025/livelink/livelink.exe/livelink/livelink.exe?func=doc.Fetch&nodeid=207583 / Livelink Deployment Assessment Scorecard template: http://cgyap025/livelink/livelink.exe/livelink/livelink.exe?func=doc.Fetch&nodeid=226259
- 4: IT Project Workspace Folder Structure / - Overview with document types, sub-folders, class codes / http://cgyap025/livelink/livelink.exe/livelink/livelink.exe?func=doc.Fetch&nodeid=1148736 / - Project Workspace folder template / http://cgyap025/livelink/livelink.exe?func=ll&objId=1121244&objAction=browse&sort=name
- 5: Presentation Template: / http://cgyap025/livelink/livelink.exe?func=doc.ViewDoc&nodeId=25831 / Agenda template: / http://cgyap025/livelink/livelink.exe?func=doc.ViewDoc&nodeId=12656&vernum=1
- 6: See Roles and Responsibilities section within the Project Charter
- 8: Livelink Project Charter Template: http://cgyap025/livelink/livelink.exe?func=doc.fetch&nodeId=36718 / Livelink Base Framework: http://cgyap025/livelink/livelink.exe?func=doc.Fetch&nodeId=25953 / Best Practices and Lessons Learned: http://cgyap025/livelink/livelink.exe?func=doc.fetch&nodeId=10830
- 12: Work Breakdown Structure template - / http://cgyap025/livelink/livelink.exe/livelink/livelink.exe?func=doc.Fetch&nodeid=238392 / Cost Benefit Analysis Template: / http://cgyap025/livelink/livelink.exe?func=doc.fetch&nodeId=28756&vernum=2
- 13: project plan template: Livelink Deployment Checklist (this document, 41177) / For overview of deliverables, see Deliverables Chart - / http://cgyap025/livelink/livelink.exe/livelink/livelink.exe?func=doc.Fetch&nodeid=366491
- 25: Decision Record Template: / http://cgyap025/livelink/livelink.exe/livelink/livelink.exe?func=doc.Fetch&nodeid=179308 / Issue Resolution Process (Footprints) / http://cgyap025/livelink/livelink.exe?func=doc.Fetch&nodeId=27409 / Additional Issue Resolution Template: / http://cgyap025/livelink/livelink.exe?func=doc.ViewDoc&nodeId=41934

| ID | WBS | Task | Duration | Start | Finish | Predecessors | Total slack | Free slack | Resources | Work |
| --- | --- | --- | --- | --- | --- | --- | --- | --- | --- | --- |
| 29 | 1.3 | **2.0 Scoping & Requirements** | 5.51d? | 2003-02-03 | 2003-02-10 |  | 27.6d |  |  | 200h |
| 30 | 1.3.2 | 2.1 Determine user base (Calgary, platform/ remote, external) | 1d | 2003-02-03 | 2003-02-03 |  | 42.45d |  | PM/BA; Business Contact | 8h |
| 31 | 1.3.10 | 2.2 Determine remote access requirements (if required) | 3d | 2003-02-03 | 2003-02-05 |  | 40.45d |  | PM/BA [50%]; Business Contact; Technical Lead [50%] | 24h |
| 32 | 1.3.7 | 2.3 Determine file migration requirements (from doc system or shared drives) | 2d? | 2003-02-03 | 2003-02-04 |  | 41.45d |  | PM/BA [30%]; Business Contact [60%]; Technical Lead [10%] | 16h |
| 33 | 1.3.8 | 2.4 Determine integration requirements with other applications (if required) | 5d | 2003-02-03 | 2003-02-07 |  | 38.45d |  | PM/BA [60%]; Business Contact; Technical Lead [40%] | 40h |
| 34 | 1.3.9 | **2.5 Determine additional requirements (if required)** | 1d? | 2003-02-03 | 2003-02-03 |  | 32.11d |  | PM/BA; Business Contact | 32h |
| 35 | 1.2.5.1 | - viewers, reports, audit trail, regulatory/ audit compliance reqmts, printers, hardware etc. | 1d? | 2003-02-03 | 2003-02-03 |  | 42.45d |  | PM/BA [200%] | 16h |
| 36 | 1.2.5.2 | - workflow, projects workspaces or collaboration tools | 1d? | 2003-02-03 | 2003-02-03 |  | 42.45d |  | PM/BA | 8h |
| 37 | 1.3.6 | 2.6 Determine security requirements | 1d | 2003-02-03 | 2003-02-03 |  | 42.45d |  | PM/BA; Business Contact | 8h |
| 38 | 1.3.11 | 2.7 Determine scanning requirements (if required) | 3.01d | 2003-02-03 | 2003-02-10 |  | 37.94d |  | PM/BA [83%]; Business Contact; Technical Lead | 24h |
| 39 | 1.3.12 | 2.8 Review functionality list and perform gap analysis (especially if legacy system being replaced) | 1d? | 2003-02-03 | 2003-02-03 |  | 42.45d |  | PM/BA | 8h |
| 40 | 1.3.13 | 2.9 Capture requirements from similar function outside this deployment (if required) | 2d | 2003-02-03 | 2003-02-04 |  | 41.45d |  | PM/BA; Business Contact; Other clients | 16h |
| 41 | 1.3.14 | 2.10 Develop conceptual design | 3d | 2003-02-03 | 2003-02-10 |  | 38.2d |  | PM/BA [75%]; Business Contact; Technical Lead | 24h |
| 43 | 1.4 | **3.0 Detailed Design** | 33.11d? | 2003-02-03 | 2003-03-21 |  | 0d |  |  | 1173.85h |
| 44 | 1.4.1 | 3.1 Complete Implementation Assessment template | 4d? | 2003-02-03 | 2003-02-06 |  | 20.02d | 0d | PM/BA [600%]; Business Contact | 192h |
| 45 | 1.4.2 | **3.2 Change Readiness activities** | 1.14d? | 2003-02-03 | 2003-02-04 |  | 31.97d |  | Business Contact [40%]; PM/BA [60%]; CR Lead(on request) | 33.14h |
| 46 | 1.4.2.7 | - Document new work practices | 1.14d? | 2003-02-03 | 2003-02-04 |  | 42.3d |  | PM/BA [25%]; Business Contact [50%]; CR Lead on request | 16h |
| 47 | 1.3.2.2 | - Other activities from Change Readiness Checklist | 1d? | 2003-02-03 | 2003-02-03 |  | 42.45d |  | PM/BA [25%]; Business Contact [50%]; Trainer [25%] | 8h |
| 48 | 1.3.3 | **3.3 Design migration plan** | 1.01d? | 2003-02-03 | 2003-02-04 |  | 32.1d |  |  | 8h |
| 49 | 1.4.2.3 | - timeline and roles for migrating from share drives/legacy doc mgmt system | 1.01d? | 2003-02-03 | 2003-02-04 |  | 42.44d |  | PM/BA [33%]; Business Sponsor [33%]; Business Contact [33%] | 8h |
| 50 | 1.4.4 | 3.4 Design integration with other applications (if required) | 5d | 2003-02-06 | 2003-02-13 | 44 | 34.45d |  | PM/BA [50%]; Business Contact; Technical Analyst [50%] | 40h |
| 51 | 1.4.5 | 3.5 Prepare design for any special requirements: reports, regulatory/ audit compliance reqmts; workflow, projects etc. | 5d | 2003-02-06 | 2003-02-13 | 44 | 33.11d |  | PM/BA [50%]; Business Contact; Technical Lead [50%] | 40h |
| 52 | 1.4.6 | 3.6 Define business continuity plan (BCP) if required | 5d? | 2003-02-03 | 2003-02-07 |  | 38.45d |  | PM/BA | 40h |
| 53 | 1.4.7 | 3.7 Design scanning setup (if required) | 5d | 2003-02-06 | 2003-02-13 | 44 | 34.45d |  | Business Contact; Technical Analyst [50%]; PM/BA [50%] | 40h |
| 54 | 1.4.8 | 3.8 Ensure risks have mitigation plan and tools/processes are defined to handle issues | 1.04d? | 2003-02-03 | 2003-02-04 |  | 42.2d |  | PM/BA [80%]; CR Lead [20%] | 8h |

Notes:
- 39: High level features list in Opportunity Assessment can be used to discuss features, and address any functionality gaps. Opportunity Assessment template: http://cgyap025/livelink/livelink.exe/livelink/livelink.exe?func=doc.Fetch&nodeid=207583
- 46: Work practices can be captured in a variety of formats, including a matrix (role / expected activities) or a workflow diagram. Template for workflow diagram: / http://cgyap025/livelink/livelink.exe?func=doc.fetch&nodeId=33700 / Example of a completed workflow diagram (very basic) / http://cgyap025/livelink/livelink.exe?func=doc.fetch&nodeId=102913

| ID | WBS | Task | Type | Duration | Start | Finish | Predecessors | Total slack | Free slack | Resources | Work |
| --- | --- | --- | --- | --- | --- | --- | --- | --- | --- | --- | --- |
| 55 | 1.4.9 | **3.9 Prepare Functional Specification** |  | 1d? | 2003-02-07 | 2003-02-07 | 44 | 18.69d | 0d | PM/BA | 23.99h |
| 56 | 1.3.9.1 | - review functional spec from change readiness perspective before business sponsor |  | 1d? | 2003-02-07 | 2003-02-07 |  | 20.02d |  | CR Lead | 8h |
| 57 | 1.4.9.1 | - obtain sign-off |  | 0.18d? | 2003-02-07 | 2003-02-07 |  | 20.84d | 0d | PM/BA; CR Lead; Technical Lead; Support Lead; Business Contact; Business Sponsor | 7.99h |
| 58 | 1.3.10 | 3.10 Conduct information sessions/demos/lunch n' learns as required |  | 1d? | 2003-02-03 | 2003-02-03 |  | 42.45d |  | Training Lead | 8h |
| 60 | 1.5 | **4.0 Configuration & Development** |  | 13.67d? | 2003-02-03 | 2003-02-21 |  | 0d |  |  | 264h |
| 61 | 1.5.1 | 4.1 Review design spec with Technical Lead (if required) |  | 1d | 2003-02-07 | 2003-02-10 | 57 | 38.27d |  | PM/BA [50%]; Technical Lead [50%] | 8h |
| 62 | 1.5.2 | 4.2 Prepare Technical spec (if required) | milestone | 1.5d | 2003-02-03 | 2003-02-04 |  | 41.95d |  | Technical Analyst; Technical Lead | 16h |
| 63 | 1.5.3 | 4.3 Configure Livelink based on functional / technical specs |  | 11d? | 2003-02-03 | 2003-02-18 |  | 0d |  | Support Lead | 88h |
| 64 | 1.5.4 | 4.4 Build/ modify & test conversion tools (if required) |  | 5d | 2003-02-03 | 2003-02-07 |  | 6d |  | Technical Analyst | 40h |
| 65 | 1.5.5 | 4.5 Build & test integration to other applications (if required) |  | 5d | 2003-02-03 | 2003-02-07 |  | 6d |  | Technical Analyst | 40h |
| 66 | 1.5.6 | 4.6 Build & test Kofax scanning scripts (if required) |  | 5d | 2003-02-03 | 2003-02-07 |  | 6d |  | Technical Analyst | 40h |
| 67 | 1.5.7 | 4.7 Provide list of scripts/ programs/ objects developed to SAdmin (for cataloging) |  | 1d | 2003-02-19 | 2003-02-19 | 63, 64, 65, 66 | 0d |  | Technical Analyst | 8h |
| 68 | 1.3.11.8 | 4.8 Migrate documents (either from share drive or from existing doc mgmt system) |  | 0.67d? | 2003-02-20 | 2003-02-20 | 67 | 0d |  | PM/BA; Technical Analyst; Business Contact | 16h |
| 69 | 1.5.8 | 4.9 QA & code walkthrough (if required) | milestone | 1d | 2003-02-20 | 2003-02-21 | 68 | 0d |  | Technical Analyst [75%]; Technical Lead; Other Platform Services resources | 8h |
| 71 | 1.6 | **5.0 Testing** |  | 9.02d | 2003-02-21 | 2003-03-06 | 69 | 0d |  |  | 184h |
| 72 | 1.6.1 | 5.1 Determine testing requirements |  | 1d | 2003-02-21 | 2003-02-24 | 55 | 27.45d |  | PM/BA [50%]; Testing Lead [50%] | 8h |
| 73 | 1.6.2 | **5.2 Conduct functional testing** |  | 2d | 2003-02-21 | 2003-02-25 |  | 0d |  |  | 88h |
| 74 | 1.6.2.1 | - security |  | 1d | 2003-02-21 | 2003-02-24 |  | 1d |  | Tester | 8h |
| 75 | 1.6.2.2 | - interface/ navigation |  | 1d | 2003-02-21 | 2003-02-24 |  | 1d |  | Tester | 8h |
| 76 | 1.6.2.3 | - custom attributes/ picklist values |  | 1d | 2003-02-21 | 2003-02-24 |  | 1d |  | Tester | 8h |
| 77 | 1.6.2.4 | - application integration |  | 2d | 2003-02-21 | 2003-02-25 |  | 0d |  | Tester | 16h |
| 78 | 1.6.2.5 | - conversion/ bulk load |  | 2d | 2003-02-21 | 2003-02-25 |  | 0d |  | Tester | 16h |
| 79 | 1.6.2.6 | - scanning setup |  | 2d | 2003-02-21 | 2003-02-25 |  | 0d |  | Tester | 16h |
| 80 | 1.6.2.7 | - reports, other special configuration/ customizations |  | 2d | 2003-02-21 | 2003-02-25 |  | 0d |  | Tester | 16h |
| 81 | 1.6.3 | 5.3 Conduct end-to-end testing |  | 3.01d | 2003-02-25 | 2003-02-28 | 73 | 0d |  | Testing Lead [33.3%]; Tester [33.3%]; PM/BA [33%] | 24h |
| 82 | 1.6.4 | 5.4 Conduct Remote Access testing (if required) |  | 3.01d | 2003-02-25 | 2003-02-28 | 73 | 3.01d |  | PM/BA [33%]; Testing Lead [33.3%]; Tester [33.3%] | 24h |
| 83 | 1.6.5 | 5.5 Conduct stress testing (docmt volumes & # of users) |  | 3.01d | 2003-02-28 | 2003-03-05 | 81 | 0d |  | PM/BA [33%]; Testing Lead [33.3%]; Tester [33.3%] | 24h |
| 84 | 1.6.6 | 5.6 Conduct Users Acceptance testing & obtain signoff | milestone | 1d | 2003-03-05 | 2003-03-06 | 73, 81, 82, 83 | 0d |  | PM/BA; Business Contact; Other clients | 16h |

Notes:
- 71: Smoke test (general description of functions to test in Livelink) / http://livelink/livelink/livelink.exe?func=doc.fetch&nodeId=10838 / Test scripts folder which contains all scripts for Livelink functions: / http://livelink/livelink/livelink.exe?func=ll&objId=38466&objAction=browse&sort=name

| ID | WBS | Task | Type | Duration | Start | Finish | Predecessors | Total slack | Free slack | Resources | Work |
| --- | --- | --- | --- | --- | --- | --- | --- | --- | --- | --- | --- |
| 86 | 1.7 | **6.0 Training** |  | 28.11d? | 2003-02-10 | 2003-03-21 |  | 0d |  |  | 143.42h |
| 87 | 1.7.1 | 6.1 Complete Training checklist | milestone | 1d | 2003-02-10 | 2003-02-10 | 55 | 20.02d | 0d | PM/BA | 8h |
| 88 | 1.7.3 | **6.2 Schedule training** |  | 1d | 2003-02-10 | 2003-02-11 | 87 | 26.11d |  | PM/BA | 32h |
| 89 | 1.7.3.1 | - Expert User |  | 1d | 2003-02-11 | 2003-02-11 |  | 36.45d |  | Training Lead | 8h |
| 90 | 1.7.3.2 | - Sr. Mgmt/ Sponsor |  | 1d | 2003-02-11 | 2003-02-11 |  | 36.45d |  | Training Lead | 8h |
| 91 | 1.7.3.3 | - Clients |  | 1d | 2003-02-10 | 2003-02-11 |  | 36.45d |  | Training Lead [50%]; PM/BA [50%]; Business Contact | 8h |
| 92 | 1.7.4 | 6.3 Configure/ promote to/ test Training envt for specific deployment |  | 2d | 2003-03-06 | 2003-03-10 | 84 | 0d |  | Technical Analyst [37.5%]; System Admin [37.5%]; Trainer | 16h |
| 93 | 1.7.6 | **6.4 Prepare custom training handouts** |  | 1d? | 2003-02-11 | 2003-02-11 | 87, 55 | 26.11d |  | Trainer; Business Contact | 20h |
| 94 | 1.7.2 | - Align training deliverables with Change Readiness Assessment |  | 1d? | 2003-02-11 | 2003-02-11 |  | 36.45d |  | PM/BA [30%]; CR Lead [30%]; Training Lead [40%] | 8h |
| 95 | 1.3.13.4.2 | - Prepare group-specific guidelines |  | 0.5d? | 2003-02-11 | 2003-02-11 |  | 35.61d |  | Trainer | 4h |
| 96 | 1.7.10 | **6.5 Conduct training & follow up re: outstanding items** |  | 5.43d | 2003-03-10 | 2003-03-18 | 92, 102, 87 | 0d |  | Trainer | 51.42h |
| 97 | 1.7.7 | - Arrange and deliver training on work practices & group-specific guidelines |  | 1.54d | 2003-03-10 | 2003-03-18 |  | 0d |  | PM/BA [10%]; Training Lead [45%]; Business Contact [45%] | 8h |
| 98 | 1.7.12 | 6.6 Gather feedback from training session |  | 1d | 2003-03-19 | 2003-03-20 | 104 | 0d |  | PM/BA [50%]; Training Lead [50%] | 8h |
| 99 | 1.7.13 | 6.7 Schedule refresher training (if required) |  | 1d | 2003-03-20 | 2003-03-21 | 98 | 0d |  | PM/BA [50%]; Business Contact; Training Lead [50%] | 8h |
| 101 | 1.3.14 | **7.0 Deployment** |  | 31.11d? | 2003-02-03 | 2003-03-19 |  | 2d |  |  | 48h |
| 102 | 1.7.5 | 7.1 Configure/ promote to/ test Production envt for specific deployment |  | 2d | 2003-03-06 | 2003-03-10 | 84 | 0d |  | Technical Analyst [37.5%]; System Admin [37.5%]; Trainer | 16h |
| 103 | 1.3.14.2 | 7.2 Deploy hardware (if any) |  | 1d? | 2003-02-03 | 2003-02-03 |  | 42.45d |  | Support | 8h |
| 104 | 1.7.11 | **7.3 Deploy software** |  | 1d? | 2003-03-18 | 2003-03-19 | 97 | 0d |  | Support | 24h |
| 105 | 1.3.14.3.1 | - Install / configure client software |  | 1d? | 2003-03-18 | 2003-03-19 |  | 0d |  | Support | 8h |
| 106 | 1.7.11 | - Send out link to Livelink |  | 1d | 2003-03-18 | 2003-03-19 |  | 0d |  | Trainer | 8h |
| 108 | 1.9 | **8.0 Post-Implementation** |  | 32.11d? | 2003-02-03 | 2003-03-20 |  | 1d |  |  | 54.29h |
| 109 | 1.8.1 | 8.1 Ensure post-implementation support is in place |  | 1d | 2003-03-19 | 2003-03-20 | 104 | 0d |  | Business Contact; PM/BA [50%]; System Admin [50%] | 8h |
| 110 | 1.8.2 | **8.2 Provide post-implementation support** |  | 2.29d? | 2003-02-03 | 2003-02-05 |  | 30.83d |  | Business Contact; PM/BA [50%]; System Admin [50%] | 22.29h |
| 111 | 1.3.15.2.1 | - Floor walks (if required) |  | 0.66d? | 2003-02-03 | 2003-02-05 |  | 39.83d |  | Business Contact [60%]; PM/BA [10%]; Trainer [30%] | 4h |
| 112 | 1.9.1 | 8.3 Conduct 30-day feedback survey |  | 1.01d | 2003-02-03 | 2003-02-04 |  | 32.1d |  | PM/BA [33%]; Change Readiness Leadt [33%]; Business Contact [33%] | 8h |
| 113 | 1.9.3 | 8.4 Analyze & respond to feedback; address any post-implementation issues |  | 1.17d? | 2003-02-03 | 2003-02-04 |  | 31.94d |  | PM/BA [25%]; Business Contact [25%]; Communications Specialist [25%]; CR Lead [25%] | 8h |
| 114 | 1.9.6 | 8.5 Produce, review and respond to usage stats (if required) |  | 1.52d? | 2003-02-03 | 2003-02-04 |  | 31.6d |  | PM/BA [20%]; Business Contact [20%]; CR Lead [20%]; SupportLead [20%]; Communications/Training Lead [20%] | 8h |

Notes:
- 93: Communications/Training/Change Readiness Matrix is a catalog of available materials: / http://cgyap025/livelink/livelink.exe?func=doc.ViewDoc&nodeId=43381
- 95: General Guidelines: / http://cgyap025/livelink/livelink.exe?func=doc.ViewDoc&nodeId=14325 / Example of group-specific Livelink Guidelines: / http://cgyap025/livelink/livelink.exe?func=doc.Fetch&nodeId=130704&vernum=2
- 98: The training survey is distributed at the end of the training session: / http://cgyap025/livelink/livelink.exe?func=doc.fetch&nodeId=28677 / A 30-day feedback survey is conducted later (see 8.1).
- 111: Overview of "floor walk" concept: / http://cgyap025/livelink/livelink.exe/livelink/livelink.exe?func=doc.Fetch&nodeid=102722
- 112: Feedback is collected 30 days after training by use of a web survey tool. / Overview - / http://cgyap025/livelink/livelink.exe/livelink/livelink.exe?func=doc.Fetch&nodeid=231936 / Survey questions - / http://cgyap025/livelink/livelink.exe/livelink/livelink.exe?func=doc.Fetch&nodeid=33419 / Invitation template -/ http://cgyap025/livelink/livelink.exe/livelink/livelink.exe?func=doc.Fetch&nodeid=183824

| ID | WBS | Task | Type | Duration | Start | Finish | Predecessors | Total slack | Resources | Work |
| --- | --- | --- | --- | --- | --- | --- | --- | --- | --- | --- |
| 116 | 1.8 | **9.0 Support** |  | 2d | 2003-03-19 | 2003-03-21 |  | 0d |  | 24h |
| 117 | 1.8.5 | 9.1 Determine Support Level Agmt reqmts |  | 1d | 2003-03-19 | 2003-03-20 | 104 | 0d | Business Contact; PM/BA; KM Support Lead | 16h |
| 118 | 1.8.6 | 9.2 Transition support to KM Support group & Action Centre | milestone | 1d | 2003-03-20 | 2003-03-21 | 109, 117 | 0d | PM/BA; KM Support Lead; Action Centre rep | 8h |
| 120 | 1.10 | **10. Project Closing** |  | 1d? | 2003-02-03 | 2003-02-03 |  | 32.11d |  | 23h |
| 121 | 1.3.17.1 | **10.1 Project Completion Report** |  | 1d? | 2003-02-03 | 2003-02-03 |  | 32.11d | PM/BA | 20h |
| 122 | 1.3.17.1.1 | - Create Project Completion Report or Signoff Document |  | 1d? | 2003-02-03 | 2003-02-03 |  | 41.11d | PM/BA | 8h |
| 123 | 1.3.17.1.2 | - Project Completion Workshop (if required) |  | 0.38d? | 2003-02-03 | 2003-02-03 |  | 41.74d | PM/BA [50%]; Business Sponsor [25%]; Business Contact [25%] | 3h |
| 124 | 1.3.17.1.3 | - Obtain Project Sign-off within 6 weeks of implementation |  | 0.49d? | 2003-02-03 | 2003-02-03 |  | 41.62d | PM/BA [13%]; Business Sponsor [12.5%] | 1h |
| 125 | 1.3.17.2 | **10.2 Project Lookback Workshop (if required)** |  | 0.12d? | 2003-02-03 | 2003-02-03 |  | 32.99d | PM/BA; Team | 3h |
| 126 | 1.3.17.2.1 | - Include results in Project Completion Report |  | 0.12d? | 2003-02-03 | 2003-02-03 |  | 41.99d | PM/BA | 1h |

Notes:
- 120: guidelines for project completion and lookback: / http://cgyap025/livelink/livelink.exe/livelink/livelink.exe?func=doc.Fetch&nodeid=152477
- 122: See Guidelines linked in note to item 9. above / template for Project Completion Report: http://cgyap025/livelink/livelink.exe/livelink/livelink.exe?func=doc.Fetch&nodeid=152283 / template for Signoff Document: / http://cgyap025/livelink/livelink.exe/livelink/livelink.exe?func=doc.Fetch&nodeid=1029879
- 125: See Guidelines linked in note to item 9. above
